# Assignment2_Plan1

How a schedule from MS Project changed from version to version. A marks actual dates.

## Version 1 (saved 2021-03-03)

Note of the change: up to days calculation

| ID | WBS | Task | Duration | Start | Finish | Predecessors | Total float | Constraint |
| --- | --- | --- | --- | --- | --- | --- | --- | --- |
| 1 | 1 | **Assignment2_Project_Plan1** | 436.31d | 2021-02-22 | 2022-10-25 |  | 0d |  |
| 2 | 1.1 | **Project Plan** | 9.05d | 2021-02-22 | 2021-03-05 |  | 0d |  |
| 3 |  | Write Plan | 2.83d | 2021-02-22 | 2021-02-24 |  | 0d | start no earlier than 2021-02-22 |
| 4 | 1.1.2 | **Review Plan** | 4.25d | 2021-02-24 | 2021-03-03 | 3 | 0d |  |
| 5 |  | Preparation for review | 2.83d | 2021-02-24 | 2021-03-01 | 3 | 0d |  |
| 6 |  | Review meeting | 1.42d | 2021-03-01 | 2021-03-03 | 5 | 0d |  |
| 7 |  | Rework | 1.97d | 2021-03-03 | 2021-03-05 | 6 | 0d |  |
| 8 | 1.2 | **Requirement** | 18.53d | 2021-03-05 | 2021-03-31 | 7 | 0d |  |
| 9 |  | Write requirement | 6.08d | 2021-03-05 | 2021-03-15 | 7 | 0d |  |
| 10 | 1.2.2 | **Review Requirements** | 9.12d | 2021-03-15 | 2021-03-26 | 9 | 0d |  |
| 11 |  | Preparation for review | 6.08d | 2021-03-15 | 2021-03-23 | 9 | 0d |  |
| 12 |  | review meeting | 3.04d | 2021-03-23 | 2021-03-26 | 11 | 0d |  |
| 13 |  | Rework | 3.33d | 2021-03-26 | 2021-03-31 | 12 | 0d |  |
| 14 | 1.3 | **Lab and Environment Setup** | 28.55d | 2021-03-31 | 2021-05-11 | 13 | 380.18d |  |
| 15 | 1.3.1 | **Hardware** | 18.3d | 2021-03-31 | 2021-04-26 | 13 | 380.18d |  |
| 16 | 1.3.1.1 | **Install Network Elements** | 3d | 2021-03-31 | 2021-04-05 | 13 | 380.18d |  |
| 17 |  | Routers | 1d | 2021-03-31 | 2021-04-01 | 13 | 18.17d |  |
| 18 |  | Bridge | 2d | 2021-04-01 | 2021-04-05 | 17 | 18.17d |  |
| 19 |  | Install Server | 8d | 2021-04-05 | 2021-04-15 | 18 | 18.17d |  |
| 20 |  | Install Clients | 7.3d | 2021-04-15 | 2021-04-26 | 19 | 18.17d |  |
| 21 | 1.3.2 | **Software** | 10.25d | 2021-04-26 | 2021-05-11 | 20 | 380.18d |  |
| 22 |  | Install Development Tools | 5.75d | 2021-04-26 | 2021-05-04 | 20 | 18.17d |  |
| 23 |  | Install Testing Tools | 4.5d | 2021-05-04 | 2021-05-11 | 22 | 18.17d |  |
| 24 | 1.4 | **Analysis/Design Document** | 29d | 2021-03-31 | 2021-05-11 | 13 | 0d |  |
| 25 |  | Write DD | 13.25d | 2021-03-31 | 2021-04-19 | 13 | 0d |  |
| 26 | 1.4.2 | **Review DD** | 7.95d | 2021-04-19 | 2021-04-29 | 25 | 0d |  |
| 27 |  | Preparation for DD | 5.3d | 2021-04-19 | 2021-04-27 | 25 | 0d |  |
| 28 |  | Review meeting | 2.65d | 2021-04-27 | 2021-04-29 | 27 | 0d |  |
| 29 |  | Rework | 7.8d | 2021-04-29 | 2021-05-11 | 28 | 0d |  |
| 30 | 1.5 | **Data Model** | 15.27d | 2021-05-11 | 2021-06-01 | 29 | 364.46d |  |
| 31 |  | Create Data Model | 7.75d | 2021-05-11 | 2021-05-21 | 29 | 364.46d |  |
| 32 | 1.5.2 | **Review Data Model** | 2.33d | 2021-05-21 | 2021-05-25 | 31 | 364.46d |  |
| 33 |  | Preparation for DM | 1.55d | 2021-05-21 | 2021-05-24 | 31 | 364.46d |  |
| 34 |  | Review meeting | 0.78d | 2021-05-24 | 2021-05-25 | 33 | 364.46d |  |
| 35 |  | Rework | 5.19d | 2021-05-25 | 2021-06-01 | 34 | 364.46d |  |
| 36 | 1.6 | **Coding and unit test** | 270.82d | 2021-05-11 | 2022-05-25 | 29 | 0d |  |
| 37 |  | Write Code | 158.08d | 2021-05-11 | 2021-12-17 | 29 | 0d |  |
| 38 | 1.6.2 | **Unit Testing** | 90.68d | 2021-12-17 | 2022-04-25 | 37 | 0d |  |
| 39 |  | Prepare/Execute test Cases | 38.46d | 2021-12-17 | 2022-02-10 | 37 | 0d |  |
| 40 |  | Fix Found Defects | 36.15d | 2022-02-10 | 2022-04-01 | 39 | 0d |  |
| 41 |  | Test Fixed Defects | 16.07d | 2022-04-01 | 2022-04-25 | 40 | 0d |  |
| 42 | 1.6.3 | **Code Inspection** | 22.06d | 2022-04-25 | 2022-05-25 | 41 | 0d |  |
| 43 |  | Preparation for Code Inspection | 5.27d | 2022-04-25 | 2022-05-02 | 41 | 0d |  |
| 44 |  | Code Inspection Meeting | 3.96d | 2022-05-02 | 2022-05-06 | 43 | 0d |  |
| 45 |  | Rework | 12.83d | 2022-05-06 | 2022-05-25 | 44 | 0d |  |
| 46 | 1.7 | **Testing** | 108.91d | 2022-05-25 | 2022-10-25 | 13, 45 | 0d |  |
| 47 |  | Write test Plan (TP) | 31.3d | 2022-05-25 | 2022-07-07 | 13 | 0d |  |
| 48 | 1.7.2 | **Review TP** | 18.41d | 2022-07-07 | 2022-08-03 | 47 | 0d |  |
| 49 |  | Preparation for TP | 7.83d | 2022-07-07 | 2022-07-19 | 47 | 0d |  |
| 50 |  | Review TP meeting | 3.92d | 2022-07-19 | 2022-07-25 | 49 | 0d |  |
| 51 |  | Rework | 6.66d | 2022-07-25 | 2022-08-03 | 50 | 0d |  |
| 52 |  | Execute TP(test cases) | 35.6d | 2022-08-03 | 2022-09-21 | 45, 51 | 0d |  |
| 53 |  | Fix Found Defects | 23.6d | 2022-09-21 | 2022-10-25 | 52 | 0d |  |
| 54 | 1.8 | **Documentation** | 17.32d | 2021-03-31 | 2021-04-23 | 13 | 377.33d |  |
| 55 |  | User Documentation | 5.33d | 2021-03-31 | 2021-04-07 | 13 | 377.33d |  |
| 56 | 1.8.2 | **Review UD** | 11.99d | 2021-04-07 | 2021-04-23 | 55 | 377.33d |  |
| 57 |  | Preparation for UD Review meeting | 5.33d | 2021-04-07 | 2021-04-15 | 55 | 377.33d |  |
| 58 |  | Review UD Meeting | 3.33d | 2021-04-15 | 2021-04-20 | 57 | 377.33d |  |
| 59 |  | Rework | 3.33d | 2021-04-20 | 2021-04-23 | 58 | 377.33d |  |
| 60 | 1.9 | **Training** | 14.08d | 2021-04-23 | 2021-05-13 | 59 | 377.33d |  |
| 61 |  | Training Handouts(TH) | 9d | 2021-04-23 | 2021-05-06 | 59 | 377.33d |  |
| 62 | 1.9.2 | **Review Training Handouts(TH)** | 5.08d | 2021-05-06 | 2021-05-13 | 61 | 377.33d |  |
| 63 |  | Preparation for TH review meeting | 1.13d | 2021-05-06 | 2021-05-10 | 61 | 377.33d |  |
| 64 |  | Review TH Meeting | 0.9d | 2021-05-10 | 2021-05-10 | 63 | 377.33d |  |
| 65 |  | Rework | 3.05d | 2021-05-10 | 2021-05-13 | 64 | 377.33d |  |

## Version 2 (saved 2021-03-03)

Note of the change: Update Assignment2_Plan1.mpp

Last finish 2022-10-25 → 2021-08-12 (-439d).

Changed:

| ID | Task | Start | Finish | Duration | Total float | Other |
| --- | --- | --- | --- | --- | --- | --- |
| 1 | **Assignment2_Project_Plan1** | 2021-02-22 → 2021-03-08 (+14d) | 2022-10-25 → 2021-08-12 (-439d) | 436.31d → 113.8d |  |  |
| 2 | **Project Plan** | 2021-02-22 → 2021-03-08 (+14d) | 2021-03-05 → 2021-03-19 (+14d) |  |  |  |
| 3 | Write Plan | 2021-02-22 → 2021-03-08 (+14d) | 2021-02-24 → 2021-03-10 (+14d) |  |  | constraint start no earlier than 2021-02-22 → start no earlier than 2021-03-08; resources none → Project Manager4 |
| 4 | **Review Plan** | 2021-02-24 → 2021-03-10 (+14d) | 2021-03-03 → 2021-03-17 (+14d) |  |  |  |
| 5 | Preparation for review | 2021-02-24 → 2021-03-10 (+14d) | 2021-03-01 → 2021-03-15 (+14d) |  |  | resources none → Document Engineer81; Programmer58; Requirement engineer28; System engineer30; Test Engineer71 |
| 6 | Review meeting | 2021-03-01 → 2021-03-15 (+14d) | 2021-03-03 → 2021-03-17 (+14d) |  |  | resources none → Document Engineer81; Programmer58; Requirement engineer28; System engineer30; Test Engineer71; Project Manager4 |
| 7 | Rework | 2021-03-03 → 2021-03-17 (+14d) | 2021-03-05 → 2021-03-19 (+14d) |  |  | resources none → Project Manager4 |
| 8 | **Requirement** | 2021-03-05 → 2021-03-19 (+14d) | 2021-03-31 → 2021-04-06 (+6d) | 18.53d → 12.26d |  |  |
| 9 | Write requirement | 2021-03-05 → 2021-03-19 (+14d) | 2021-03-15 → 2021-03-23 (+8d) | 6.08d → 2.03d |  | resources none → Requirement engineer28; Requirement engineer29; Requirement engineer32 |
| 10 | **Review Requirements** | 2021-03-15 → 2021-03-23 (+8d) | 2021-03-26 → 2021-04-05 (+10d) |  |  |  |
| 11 | Preparation for review | 2021-03-15 → 2021-03-23 (+8d) | 2021-03-23 → 2021-03-31 (+8d) |  |  | resources none → Document Engineer81; Programmer58; System engineer30; Test Engineer71 |
| 12 | review meeting | 2021-03-23 → 2021-03-31 (+8d) | 2021-03-26 → 2021-04-05 (+10d) |  |  | resources none → Document Engineer81; Programmer58; System engineer30; Test Engineer71; Requirement engineer28 |
| 13 | Rework | 2021-03-26 → 2021-04-05 (+10d) | 2021-03-31 → 2021-04-06 (+6d) | 3.33d → 1.11d |  | resources none → Requirement engineer28; Requirement engineer29; Requirement engineer32 |
| 14 | **Lab and Environment Setup** | 2021-03-31 → 2021-04-06 (+6d) | 2021-05-11 → 2021-04-16 (-25d) | 28.55d → 8.24d | 380.18d → 84.25d |  |
| 15 | **Hardware** | 2021-03-31 → 2021-04-06 (+6d) | 2021-04-26 → 2021-04-13 (-13d) | 18.3d → 4.83d | 380.18d → 84.25d |  |
| 16 | **Install Network Elements** | 2021-03-31 → 2021-04-06 (+6d) | 2021-04-05 → 2021-04-07 (+2d) | 3d → 1d | 380.18d → 84.25d |  |
| 17 | Routers | 2021-03-31 → 2021-04-06 (+6d) | 2021-04-01 → 2021-04-06 (+5d) | 1d → 0.5d | 18.17d → 389.89d | resources none → System engineer30; System engineer31 |
| 18 | Bridge | 2021-04-01 → 2021-04-06 (+5d) | 2021-04-05 → 2021-04-07 (+2d) | 2d → 0.5d | 18.17d → 389.89d | resources none → System engineer30; System engineer31; System engineer32; System engineer35 |
| 19 | Install Server | 2021-04-05 → 2021-04-07 (+2d) | 2021-04-15 → 2021-04-09 (-6d) | 8d → 2d | 18.17d → 389.89d | resources none → System engineer30; System engineer31; System engineer32; System engineer35 |
| 20 | Install Clients | 2021-04-15 → 2021-04-09 (-6d) | 2021-04-26 → 2021-04-13 (-13d) | 7.3d → 1.82d | 18.17d → 389.89d | resources none → System engineer30; System engineer31; System engineer32; System engineer35 |
| 21 | **Software** | 2021-04-26 → 2021-04-13 (-13d) | 2021-05-11 → 2021-04-16 (-25d) | 10.25d → 3.42d | 380.18d → 84.25d |  |
| 22 | Install Development Tools | 2021-04-26 → 2021-04-13 (-13d) | 2021-05-04 → 2021-04-15 (-19d) | 5.75d → 1.92d | 18.17d → 389.89d | resources none → System engineer31; System engineer32; System engineer35 |
| 23 | Install Testing Tools | 2021-05-04 → 2021-04-15 (-19d) | 2021-05-11 → 2021-04-16 (-25d) | 4.5d → 1.5d | 18.17d → 389.89d | resources none → System engineer31; System engineer32; System engineer35 |
| 24 | **Analysis/Design Document** | 2021-03-31 → 2021-04-06 (+6d) | 2021-05-11 → 2021-04-23 (-18d) | 29d → 13.2d |  |  |
| 25 | Write DD | 2021-03-31 → 2021-04-06 (+6d) | 2021-04-19 → 2021-04-08 (-11d) | 13.25d → 2.65d |  | resources none → Document Engineer81; Document Engineer82; Document Engineer84; Document Engineer85; Document Engineer91 |
| 26 | **Review DD** | 2021-04-19 → 2021-04-08 (-11d) | 2021-04-29 → 2021-04-20 (-9d) |  |  |  |
| 27 | Preparation for DD | 2021-04-19 → 2021-04-08 (-11d) | 2021-04-27 → 2021-04-16 (-11d) |  |  | resources none → Programmer58; Requirement engineer28; Test Engineer71; System engineer7 |
| 28 | Review meeting | 2021-04-27 → 2021-04-16 (-11d) | 2021-04-29 → 2021-04-20 (-9d) |  |  | resources none → Document Engineer81; Document Engineer82; Programmer58; Requirement engineer28; System engineer30; Test Engineer71 |
| 29 | Rework | 2021-04-29 → 2021-04-20 (-9d) | 2021-05-11 → 2021-04-23 (-18d) | 7.8d → 2.6d |  | resources none → Document Engineer84; Document Engineer85; Document Engineer91 |
| 30 | **Data Model** | 2021-05-11 → 2021-04-23 (-18d) | 2021-06-01 → 2021-05-04 (-28d) | 15.27d → 6.64d | 364.46d → 72.65d |  |
| 31 | Create Data Model | 2021-05-11 → 2021-04-23 (-18d) | 2021-05-21 → 2021-04-28 (-23d) | 7.75d → 2.58d | 364.46d → 72.65d | resources none → System engineer31; System engineer32; System engineer35 |
| 32 | **Review Data Model** | 2021-05-21 → 2021-04-28 (-23d) | 2021-05-25 → 2021-04-30 (-25d) |  | 364.46d → 72.65d |  |
| 33 | Preparation for DM | 2021-05-21 → 2021-04-28 (-23d) | 2021-05-24 → 2021-04-29 (-25d) |  | 364.46d → 72.65d | resources none → Document Engineer81; Programmer58; Requirement engineer28; Test Engineer71 |
| 34 | Review meeting | 2021-05-24 → 2021-04-29 (-25d) | 2021-05-25 → 2021-04-30 (-25d) |  | 364.46d → 72.65d | resources none → Document Engineer81; Programmer58; Requirement engineer28; Test Engineer71; System engineer32; System engineer35 |
| 35 | Rework | 2021-05-25 → 2021-04-30 (-25d) | 2021-06-01 → 2021-05-04 (-28d) | 5.19d → 1.73d | 364.46d → 72.65d | resources none → System engineer31; System engineer32; System engineer35 |
| 36 | **Coding and unit test** | 2021-05-11 → 2021-04-23 (-18d) | 2022-05-25 → 2021-06-22 (-337d) | 270.82d → 41.59d |  |  |
| 37 | Write Code | 2021-05-11 → 2021-04-23 (-18d) | 2021-12-17 → 2021-05-10 (-221d) | 158.08d → 11.29d |  | resources none → Programmer59; Programmer65; Programmer66; Programmer7; Programmer12; Programmer13; Programmer22; Programmer23; Programmer24; Programmer25; Programmer26; Programmer27; Programmer28; Programmer29 |
| 38 | **Unit Testing** | 2021-12-17 → 2021-05-10 (-221d) | 2022-04-25 → 2021-06-03 (-326d) | 90.68d → 17.86d |  |  |
| 39 | Prepare/Execute test Cases | 2021-12-17 → 2021-05-10 (-221d) | 2022-02-10 → 2021-05-17 (-269d) | 38.46d → 4.81d |  | resources none → Programmer58; Programmer59; Programmer65; Programmer66; Programmer26; Programmer27; Programmer28; Programmer29 |
| 40 | Fix Found Defects | 2022-02-10 → 2021-05-17 (-269d) | 2022-04-01 → 2021-05-28 (-308d) | 36.15d → 9.04d |  | resources none → Programmer58; Programmer59; Programmer65; Programmer66 |
| 41 | Test Fixed Defects | 2022-04-01 → 2021-05-28 (-308d) | 2022-04-25 → 2021-06-03 (-326d) | 16.07d → 4.02d |  | resources none → Programmer58; Programmer59; Programmer65; Programmer66 |
| 42 | **Code Inspection** | 2022-04-25 → 2021-06-03 (-326d) | 2022-05-25 → 2021-06-22 (-337d) | 22.06d → 12.44d |  |  |
| 43 | Preparation for Code Inspection | 2022-04-25 → 2021-06-03 (-326d) | 2022-05-02 → 2021-06-10 (-326d) |  |  | resources none → Document Engineer81; Requirement engineer28; System engineer30; Test Engineer71 |
| 44 | Code Inspection Meeting | 2022-05-02 → 2021-06-10 (-326d) | 2022-05-06 → 2021-06-16 (-324d) |  |  | resources none → Document Engineer81; Requirement engineer28; System engineer30; Test Engineer71; Programmer58; Programmer59; Programmer65; Programmer66 |
| 45 | Rework | 2022-05-06 → 2021-06-16 (-324d) | 2022-05-25 → 2021-06-22 (-337d) | 12.83d → 3.21d |  | resources none → Programmer58; Programmer59; Programmer65; Programmer66 |
| 46 | **Testing** | 2022-05-25 → 2021-06-22 (-337d) | 2022-10-25 → 2021-08-12 (-439d) | 108.91d → 37.7d |  |  |
| 47 | Write test Plan (TP) | 2022-05-25 → 2021-06-22 (-337d) | 2022-07-07 → 2021-07-01 (-371d) | 31.3d → 7.83d |  | resources none → Test Engineer71; Test Engineer72; Test Engineer73; Test Engineer74 |
| 48 | **Review TP** | 2022-07-07 → 2021-07-01 (-371d) | 2022-08-03 → 2021-07-23 (-376d) | 18.41d → 15.08d |  |  |
| 49 | Preparation for TP | 2022-07-07 → 2021-07-01 (-371d) | 2022-07-19 → 2021-07-13 (-371d) |  |  | resources none → Document Engineer81; Programmer58; Requirement engineer28; System engineer30 |
| 50 | Review TP meeting | 2022-07-19 → 2021-07-13 (-371d) | 2022-07-25 → 2021-07-19 (-371d) |  |  | resources none → Document Engineer81; Programmer58; Requirement engineer28; System engineer30; Test Engineer71 |
| 51 | Rework | 2022-07-25 → 2021-07-19 (-371d) | 2022-08-03 → 2021-07-23 (-376d) | 6.66d → 3.33d |  | resources none → Test Engineer71; Test Engineer72 |
| 52 | Execute TP(test cases) | 2022-08-03 → 2021-07-23 (-376d) | 2022-09-21 → 2021-08-04 (-413d) | 35.6d → 8.9d |  | resources none → Test Engineer71; Test Engineer72; Test Engineer73; Test Engineer74 |
| 53 | Fix Found Defects | 2022-09-21 → 2021-08-04 (-413d) | 2022-10-25 → 2021-08-12 (-439d) | 23.6d → 5.9d |  | resources none → Programmer58; Programmer59; Programmer65; Programmer66 |
| 54 | **Documentation** | 2021-03-31 → 2021-04-06 (+6d) |  | 17.32d → 13.06d | 377.33d → 65.36d |  |
| 55 | User Documentation | 2021-03-31 → 2021-04-06 (+6d) |  | 5.33d → 1.07d | 377.33d → 65.36d | resources none → Document Engineer81; Document Engineer82; Document Engineer44; Document Engineer45; Document Engineer43 |
| 57 | Preparation for UD Review meeting |  | 2021-04-15 → 2021-04-14 (-1d) |  | 377.33d → 65.36d |  |
| 58 | Review UD Meeting | 2021-04-15 → 2021-04-14 (-1d) |  |  | 377.33d → 65.36d |  |
| 63 | Preparation for TH review meeting |  | 2021-05-10 → 2021-05-07 (-3d) |  | 377.33d → 65.36d |  |
| 64 | Review TH Meeting | 2021-05-10 → 2021-05-07 (-3d) |  |  | 377.33d → 65.36d |  |

## Version 3 (saved 2021-03-03)

Note of the change: Update Assign1 and Assign2

Last finish 2021-08-12 → 2021-08-16 (+4d).

Changed:

| ID | Task | Start | Finish | Duration | Total float | Other |
| --- | --- | --- | --- | --- | --- | --- |
| 1 | **Assignment2_Project_Plan1** |  | 2021-08-12 → 2021-08-16 (+4d) | 113.8d → 115.05d |  |  |
| 36 | **Coding and unit test** |  | 2021-06-22 → 2021-06-23 (+1d) | 41.59d → 42.84d |  |  |
| 38 | **Unit Testing** |  | 2021-06-03 → 2021-06-01 (-2d) | 17.86d → 15.94d |  |  |
| 39 | Prepare/Execute test Cases |  | 2021-05-17 → 2021-05-18 (+1d) | 4.81d → 5.49d |  | resources Programmer58; Programmer59; Programmer65; Programmer66; Programmer26; Programmer27; Programmer28; Programmer29 → Programmer59; Programmer65; Programmer66; Programmer26; Programmer27; Programmer28; Programmer29 |
| 40 | Fix Found Defects | 2021-05-17 → 2021-05-18 (+1d) | 2021-05-28 → 2021-05-27 (-1d) | 9.04d → 7.23d |  | resources Programmer58; Programmer59; Programmer65; Programmer66 → Programmer59; Programmer65; Programmer66; Programmer24; Programmer25 |
| 41 | Test Fixed Defects | 2021-05-28 → 2021-05-27 (-1d) | 2021-06-03 → 2021-06-01 (-2d) | 4.02d → 3.21d |  | resources Programmer58; Programmer59; Programmer65; Programmer66 → Programmer59; Programmer65; Programmer66; Programmer28; Programmer29 |
| 42 | **Code Inspection** | 2021-06-03 → 2021-06-01 (-2d) | 2021-06-22 → 2021-06-23 (+1d) | 12.44d → 15.61d |  |  |
| 43 | Preparation for Code Inspection | 2021-06-03 → 2021-06-01 (-2d) | 2021-06-10 → 2021-06-09 (-1d) |  |  |  |
| 44 | Code Inspection Meeting | 2021-06-10 → 2021-06-09 (-1d) | 2021-06-16 → 2021-06-15 (-1d) | 3.96d → 4.17d |  | resources Document Engineer81; Requirement engineer28; System engineer30; Test Engineer71; Programmer58; Programmer59; Programmer65; Programmer66 → Document Engineer81; Requirement engineer28; System engineer30; Test Engineer71; Programmer59; Programmer65; Programmer66; Programmer29 |
| 45 | Rework | 2021-06-16 → 2021-06-15 (-1d) | 2021-06-22 → 2021-06-23 (+1d) | 3.21d → 6.17d |  | resources Programmer58; Programmer59; Programmer65; Programmer66 → Programmer59; Programmer65; Programmer66; Programmer29 |
| 46 | **Testing** | 2021-06-22 → 2021-06-23 (+1d) | 2021-08-12 → 2021-08-16 (+4d) |  |  |  |
| 47 | Write test Plan (TP) | 2021-06-22 → 2021-06-23 (+1d) | 2021-07-01 → 2021-07-05 (+4d) |  |  |  |
| 48 | **Review TP** | 2021-07-01 → 2021-07-05 (+4d) | 2021-07-23 → 2021-07-26 (+3d) |  |  |  |
| 49 | Preparation for TP | 2021-07-01 → 2021-07-05 (+4d) | 2021-07-13 → 2021-07-15 (+2d) |  |  |  |
| 50 | Review TP meeting | 2021-07-13 → 2021-07-15 (+2d) | 2021-07-19 → 2021-07-20 (+1d) |  |  |  |
| 51 | Rework | 2021-07-19 → 2021-07-20 (+1d) | 2021-07-23 → 2021-07-26 (+3d) |  |  |  |
| 52 | Execute TP(test cases) | 2021-07-23 → 2021-07-26 (+3d) | 2021-08-04 → 2021-08-06 (+2d) |  |  |  |
| 53 | Fix Found Defects | 2021-08-04 → 2021-08-06 (+2d) | 2021-08-12 → 2021-08-16 (+4d) |  |  |  |
| 54 | **Documentation** |  | 2021-04-23 → 2021-04-26 (+3d) | 13.06d → 14.04d | 65.36d → 57.5d |  |
| 55 | User Documentation |  | 2021-04-07 → 2021-04-12 (+5d) | 1.07d → 2.13d | 65.36d → 57.5d |  |
| 56 | **Review UD** | 2021-04-07 → 2021-04-12 (+5d) | 2021-04-23 → 2021-04-26 (+3d) | 11.99d → 10.32d | 65.36d → 57.5d |  |
| 57 | Preparation for UD Review meeting | 2021-04-07 → 2021-04-12 (+5d) | 2021-04-14 → 2021-04-19 (+5d) |  | 65.36d → 57.5d | resources none → Requirement engineer29; Test Engineer72; Programmer59; System engineer16 |
| 58 | Review UD Meeting | 2021-04-14 → 2021-04-19 (+5d) | 2021-04-20 → 2021-04-22 (+2d) |  | 65.36d → 57.5d | resources none → Requirement engineer29; Test Engineer72; Programmer59; System engineer16; Document Engineer44 |
| 59 | Rework | 2021-04-20 → 2021-04-22 (+2d) | 2021-04-23 → 2021-04-26 (+3d) | 3.33d → 1.67d | 65.36d → 57.5d | resources none → Document Engineer44; Document Engineer45 |
| 60 | **Training** | 2021-04-23 → 2021-04-26 (+3d) | 2021-05-13 → 2021-05-26 (+13d) | 14.08d → 22.2d | 65.36d → 57.5d |  |
| 61 | Training Handouts(TH) | 2021-04-23 → 2021-04-26 (+3d) | 2021-05-06 → 2021-04-29 (-7d) | 9d → 3d | 65.36d → 57.5d | resources none → Document Engineer84; Document Engineer85; Document Engineer91 |
| 62 | **Review Training Handouts(TH)** | 2021-05-06 → 2021-04-29 (-7d) | 2021-05-13 → 2021-05-26 (+13d) | 5.08d → 19.2d | 65.36d → 57.5d |  |
| 63 | Preparation for TH review meeting | 2021-05-06 → 2021-04-29 (-7d) | 2021-05-07 → 2021-05-24 (+17d) | 1.13d → 2.26d | 65.36d → 57.5d | resources none → System engineer30; Requirement engineer29; Test Engineer72; Programmer7 |
| 64 | Review TH Meeting | 2021-05-07 → 2021-05-24 (+17d) | 2021-05-10 → 2021-05-25 (+15d) |  | 65.36d → 57.5d | resources none → System engineer30; Requirement engineer29; Test Engineer72; Programmer7; Document Engineer91 |
| 65 | Rework | 2021-05-10 → 2021-05-25 (+15d) | 2021-05-13 → 2021-05-26 (+13d) | 3.05d → 1.02d | 65.36d → 57.5d | resources none → Document Engineer91; Document Engineer84; Document Engineer85 |
