# Assignment#3

How a schedule from MS Project changed from version to version. A marks actual dates.

## Version 1 (saved 2021-03-17)

Note of the change: Assignment 3 files

| ID | WBS | Task | Duration | Start | Finish | Predecessors | Total float |
| --- | --- | --- | --- | --- | --- | --- | --- |
| 1 | 1 | **Project Assignment 3** | 42d | 2021-03-17 | 2021-05-13 |  | 0d |
| 2 | 1.1 | **Project Plan** | 4d | 2021-03-17 | 2021-03-22 |  | 0d |
| 3 |  | Write Plan | 1d | 2021-03-17 | 2021-03-17 |  | 0d |
| 4 | 1.1.2 | **Review Plan** | 2d | 2021-03-18 | 2021-03-19 | 3 | 0d |
| 5 |  | Preparation for review | 1d | 2021-03-18 | 2021-03-18 | 3 | 0d |
| 6 |  | Review meeting | 1d | 2021-03-19 | 2021-03-19 | 5 | 0d |
| 7 |  | Rework | 1d | 2021-03-22 | 2021-03-22 | 6 | 0d |
| 8 | 1.2 | **Documented Software Development Process Updates** | 4d | 2021-03-23 | 2021-03-26 | 7 | 0d |
| 9 |  | Process changes | 1d | 2021-03-23 | 2021-03-23 | 7 | 0d |
| 10 | 1.2.2 | **Review changes** | 2d | 2021-03-24 | 2021-03-25 | 9 | 0d |
| 11 |  | Preparation for review | 1d | 2021-03-24 | 2021-03-24 | 9 | 0d |
| 12 |  | Review Meeting | 1d | 2021-03-25 | 2021-03-25 | 11 | 0d |
| 13 |  | Rework | 1d | 2021-03-26 | 2021-03-26 | 12 | 0d |
| 14 | 1.3 | **Requirement** | 4d | 2021-03-29 | 2021-04-01 | 13 | 0d |
| 15 |  | Write requirements | 1d | 2021-03-29 | 2021-03-29 | 13 | 0d |
| 16 | 1.3.2 | **Review requirements** | 2d | 2021-03-30 | 2021-03-31 | 15 | 0d |
| 17 |  | Preparation for review | 1d | 2021-03-30 | 2021-03-30 | 15 | 0d |
| 18 |  | Review Meeting | 1d | 2021-03-31 | 2021-03-31 | 17 | 0d |
| 19 |  | Rework | 1d | 2021-04-01 | 2021-04-01 | 18 | 0d |
| 20 | 1.4 | **Build the development and testing lab environment** | 5d | 2021-03-23 | 2021-03-29 | 7 | 33d |
| 21 | 1.4.1 | **Hardware Environemnt** | 2d | 2021-03-23 | 2021-03-24 | 7 | 33d |
| 22 |  | Servers | 1d | 2021-03-23 | 2021-03-23 | 7 | 33d |
| 23 |  | Clients | 1d | 2021-03-24 | 2021-03-24 | 22 | 33d |
| 24 | 1.4.2 | **Software Development Tools** | 1d | 2021-03-25 | 2021-03-25 | 23 | 33d |
| 25 |  | Build/compile tools | 1d | 2021-03-25 | 2021-03-25 | 23 | 33d |
| 26 | 1.4.3 | **Software Testing Tools** | 2d | 2021-03-26 | 2021-03-29 | 25 | 33d |
| 27 |  | Test cases execution tools | 1d | 2021-03-26 | 2021-03-26 | 25 | 33d |
| 28 |  | simulation tools | 1d | 2021-03-29 | 2021-03-29 | 27 | 33d |
| 29 | 1.5 | **Analysis** | 4d | 2021-04-02 | 2021-04-07 | 19 | 0d |
| 30 |  | Write Analysis Document | 1d | 2021-04-02 | 2021-04-02 | 19 | 0d |
| 31 | 1.5.2 | **Review Analysis Document** | 2d | 2021-04-05 | 2021-04-06 | 30 | 0d |
| 32 |  | Preparation for Analysis Document | 1d | 2021-04-05 | 2021-04-05 | 30 | 0d |
| 33 |  | Review Meeting | 1d | 2021-04-06 | 2021-04-06 | 32 | 0d |
| 34 |  | Rework | 1d | 2021-04-07 | 2021-04-07 | 33 | 0d |
| 35 | 1.6 | **Design** | 8d | 2021-04-08 | 2021-04-19 | 34 | 0d |
| 36 |  | Write DD | 1d | 2021-04-08 | 2021-04-08 | 34 | 0d |
| 37 | 1.6.2 | **Review DD** | 2d | 2021-04-09 | 2021-04-12 | 36 | 0d |
| 38 |  | Preparation for DD | 1d | 2021-04-09 | 2021-04-09 | 36 | 0d |
| 39 |  | Review Meeting | 1d | 2021-04-12 | 2021-04-12 | 38 | 0d |
| 40 |  | Rework | 1d | 2021-04-13 | 2021-04-13 | 39 | 0d |
| 41 |  | Write Data model | 1d | 2021-04-14 | 2021-04-14 | 40 | 0d |
| 42 | 1.6.5 | **Review DM** | 2d | 2021-04-15 | 2021-04-16 | 41 | 0d |
| 43 |  | Preparation for DM | 1d | 2021-04-15 | 2021-04-15 | 41 | 0d |
| 44 |  | Review Meeting | 1d | 2021-04-16 | 2021-04-16 | 43 | 0d |
| 45 |  | Rework | 1d | 2021-04-19 | 2021-04-19 | 44 | 0d |
| 46 | 1.7 | **Coding** | 7d | 2021-04-20 | 2021-04-28 | 45 | 0d |
| 47 |  | Write code | 1d | 2021-04-20 | 2021-04-20 | 45 | 0d |
| 48 | 1.7.2 | **Unit testing** | 3d | 2021-04-21 | 2021-04-23 | 47 | 0d |
| 49 |  | Prepare/Execute test cases | 1d | 2021-04-21 | 2021-04-21 | 47 | 0d |
| 50 |  | Fix found defects | 1d | 2021-04-22 | 2021-04-22 | 49 | 0d |
| 51 |  | Test fixed defects | 1d | 2021-04-23 | 2021-04-23 | 50 | 0d |
| 52 | 1.7.3 | **Code inspection** | 3d | 2021-04-26 | 2021-04-28 | 51 | 0d |
| 53 |  | Preparation for code inspection | 1d | 2021-04-26 | 2021-04-26 | 51 | 0d |
| 54 |  | code inspection meeting | 1d | 2021-04-27 | 2021-04-27 | 53 | 0d |
| 55 |  | Rework | 1d | 2021-04-28 | 2021-04-28 | 54 | 0d |
| 56 | 1.8 | **Testing** | 7d | 2021-04-29 | 2021-05-07 | 19, 55 | 0d |
| 57 |  | Write test plan | 1d | 2021-04-29 | 2021-04-29 | 19 | 0d |
| 58 | 1.8.2 | **Review TP** | 3d | 2021-04-30 | 2021-05-04 | 57 | 0d |
| 59 |  | Preparation for TP | 1d | 2021-04-30 | 2021-04-30 | 57 | 0d |
| 60 |  | Review TP meeting | 1d | 2021-05-03 | 2021-05-03 | 59 | 0d |
| 61 |  | Rework | 1d | 2021-05-04 | 2021-05-04 | 60 | 0d |
| 62 |  | Execute TP (test cases) | 1d | 2021-05-05 | 2021-05-05 | 55, 61 | 0d |
| 63 |  | Fix found defects | 1d | 2021-05-06 | 2021-05-06 | 62 | 0d |
| 64 |  | Test fixed defects | 1d | 2021-05-07 | 2021-05-07 | 63 | 0d |
| 65 | 1.9 | **Documentation** | 4d | 2021-05-10 | 2021-05-13 | 19, 64 | 0d |
| 66 |  | User documentation | 1d | 2021-05-10 | 2021-05-10 | 19, 64 | 0d |
| 67 | 1.9.2 | **Review UD** | 3d | 2021-05-11 | 2021-05-13 | 66 | 0d |
| 68 |  | Preparation for UD Review | 1d | 2021-05-11 | 2021-05-11 | 66 | 0d |
| 69 |  | Review UD Meeting | 1d | 2021-05-12 | 2021-05-12 | 68 | 0d |
| 70 |  | Rework | 1d | 2021-05-13 | 2021-05-13 | 69 | 0d |

## Version 2 (saved 2021-03-21)

Note of the change: Complete with duration calculation

Last finish 2021-05-13 → 2022-09-07 (+482d).

Added:

| ID | Task | Duration | Start | Finish | Predecessors |
| --- | --- | --- | --- | --- | --- |
| 16 | Write Use case Model | 67d | 2021-04-29 | 2021-08-02 | 15 |

Changed:

| ID | Task | Start | Finish | Duration | Total float | Predecessors | Other |
| --- | --- | --- | --- | --- | --- | --- | --- |
| 1 | **Project Assignment 3** | 2021-03-17 → 2021-03-22 (+5d) | 2021-05-13 → 2022-09-07 (+482d) | 42d → 382.59d |  |  |  |
| 2 | **Project Plan** | 2021-03-17 → 2021-03-22 (+5d) | 2021-03-22 → 2021-04-07 (+16d) | 4d → 12.77d |  |  |  |
| 3 | Write Plan | 2021-03-17 → 2021-03-22 (+5d) | 2021-03-17 → 2021-03-26 (+9d) | 1d → 4.91d |  |  | constraint none → start no earlier than 2021-03-22 |
| 4 | **Review Plan** | 2021-03-18 → 2021-03-26 (+8d) | 2021-03-19 → 2021-04-06 (+18d) | 2d → 6.39d |  |  |  |
| 5 | Preparation for review | 2021-03-18 → 2021-03-26 (+8d) | 2021-03-18 → 2021-04-01 (+14d) | 1d → 3.93d |  |  |  |
| 6 | Review meeting | 2021-03-19 → 2021-04-01 (+13d) | 2021-03-19 → 2021-04-06 (+18d) | 1d → 2.46d |  |  |  |
| 7 | Rework | 2021-03-22 → 2021-04-06 (+15d) | 2021-03-22 → 2021-04-07 (+16d) | 1d → 1.47d |  |  |  |
| 8 | **Documented Software Development Process Updates** | 2021-03-23 → 2021-04-07 (+15d) | 2021-03-26 → 2021-04-22 (+27d) | 4d → 10.53d |  |  |  |
| 9 | Process changes | 2021-03-23 → 2021-04-07 (+15d) | 2021-03-23 → 2021-04-15 (+23d) | 1d → 6d |  |  |  |
| 10 | **Review changes** | 2021-03-24 → 2021-04-15 (+22d) | 2021-03-25 → 2021-04-21 (+27d) | 2d → 3.6d |  |  |  |
| 11 | Preparation for review | 2021-03-24 → 2021-04-15 (+22d) | 2021-03-24 → 2021-04-20 (+27d) | 1d → 2.4d |  |  |  |
| 12 | Review Meeting | 2021-03-25 → 2021-04-20 (+26d) | 2021-03-25 → 2021-04-21 (+27d) | 1d → 1.2d |  |  |  |
| 13 | Rework | 2021-03-26 → 2021-04-21 (+26d) | 2021-03-26 → 2021-04-22 (+27d) | 1d → 0.93d |  |  |  |
| 14 | **Requirement** | 2021-03-29 → 2021-04-22 (+24d) | 2021-04-01 → 2021-08-17 (+138d) | 4d → 83.54d |  |  |  |
| 15 | Write requirements | 2021-03-29 → 2021-04-22 (+24d) | 2021-03-29 → 2021-04-29 (+31d) | 1d → 5.57d |  |  |  |
| 17 | **Review requirements** | 2021-03-30 → 2021-08-02 (+125d) | 2021-03-31 → 2021-08-12 (+134d) | 2d → 7.64d |  | 15 → 16 |  |
| 18 | Preparation for review | 2021-03-30 → 2021-08-02 (+125d) | 2021-03-30 → 2021-08-09 (+132d) | 1d → 4.84d |  | 15 → 16 |  |
| 19 | Review Meeting | 2021-03-31 → 2021-08-09 (+131d) | 2021-03-31 → 2021-08-12 (+134d) | 1d → 2.8d |  |  |  |
| 20 | Rework | 2021-04-01 → 2021-08-12 (+133d) | 2021-04-01 → 2021-08-17 (+138d) | 1d → 3.33d |  |  |  |
| 21 | **Build the development and testing lab environment** | 2021-03-23 → 2021-04-07 (+15d) | 2021-03-29 → 2021-05-17 (+49d) | 5d → 27.9d | 33d → 76.41d |  |  |
| 22 | **Hardware Environemnt** | 2021-03-23 → 2021-04-07 (+15d) | 2021-03-24 → 2021-05-03 (+40d) | 2d → 17.4d | 33d → 76.41d |  |  |
| 23 | Servers | 2021-03-23 → 2021-04-07 (+15d) | 2021-03-23 → 2021-04-23 (+31d) | 1d → 12d | 33d → 421.47d |  |  |
| 24 | Clients | 2021-03-24 → 2021-04-23 (+30d) | 2021-03-24 → 2021-05-03 (+40d) | 1d → 5.4d | 33d → 421.47d |  |  |
| 25 | **Software Development Tools** | 2021-03-25 → 2021-05-03 (+39d) | 2021-03-25 → 2021-05-04 (+40d) |  | 33d → 76.41d |  |  |
| 26 | Build/compile tools | 2021-03-25 → 2021-05-03 (+39d) | 2021-03-25 → 2021-05-04 (+40d) |  | 33d → 421.47d |  |  |
| 27 | **Software Testing Tools** | 2021-03-26 → 2021-05-04 (+39d) | 2021-03-29 → 2021-05-17 (+49d) | 2d → 9.5d | 33d → 76.41d |  |  |
| 28 | Test cases execution tools | 2021-03-26 → 2021-05-04 (+39d) | 2021-03-26 → 2021-05-07 (+42d) | 1d → 3.5d | 33d → 421.47d |  |  |
| 29 | simulation tools | 2021-03-29 → 2021-05-07 (+39d) | 2021-03-29 → 2021-05-17 (+49d) | 1d → 6d | 33d → 421.47d |  |  |
| 30 | **Analysis** | 2021-04-02 → 2021-08-17 (+137d) | 2021-04-07 → 2021-09-01 (+147d) | 4d → 10.24d |  |  |  |
| 31 | Write Analysis Document | 2021-04-02 → 2021-08-17 (+137d) | 2021-04-02 → 2021-08-23 (+143d) | 1d → 3.4d |  |  |  |
| 32 | **Review Analysis Document** | 2021-04-05 → 2021-08-23 (+140d) | 2021-04-06 → 2021-08-30 (+146d) | 2d → 5.1d |  |  |  |
| 33 | Preparation for Analysis Document | 2021-04-05 → 2021-08-23 (+140d) | 2021-04-05 → 2021-08-26 (+143d) | 1d → 3.4d |  |  |  |
| 34 | Review Meeting | 2021-04-06 → 2021-08-26 (+142d) | 2021-04-06 → 2021-08-30 (+146d) | 1d → 1.7d |  |  |  |
| 35 | Rework | 2021-04-07 → 2021-08-30 (+145d) | 2021-04-07 → 2021-09-01 (+147d) | 1d → 1.74d |  |  |  |
| 36 | **Design** | 2021-04-08 → 2021-09-01 (+146d) | 2021-04-19 → 2021-10-11 (+175d) | 8d → 28.18d |  | 35 → 35, 29 |  |
| 37 | Write DD | 2021-04-08 → 2021-09-01 (+146d) | 2021-04-08 → 2021-09-09 (+154d) | 1d → 6.8d |  | 35 → 35, 29 |  |
| 38 | **Review DD** | 2021-04-09 → 2021-09-09 (+153d) | 2021-04-12 → 2021-09-20 (+161d) | 2d → 6.35d |  |  |  |
| 39 | Preparation for DD | 2021-04-09 → 2021-09-09 (+153d) | 2021-04-09 → 2021-09-15 (+159d) | 1d → 4.08d |  |  |  |
| 40 | Review Meeting | 2021-04-12 → 2021-09-15 (+156d) | 2021-04-12 → 2021-09-20 (+161d) | 1d → 2.27d |  |  |  |
| 41 | Rework | 2021-04-13 → 2021-09-20 (+160d) | 2021-04-13 → 2021-09-27 (+167d) | 1d → 4.85d |  |  |  |
| 42 | Write Data model | 2021-04-14 → 2021-09-27 (+166d) | 2021-04-14 → 2021-10-04 (+173d) | 1d → 5.63d |  |  |  |
| 43 | **Review DM** | 2021-04-15 → 2021-10-04 (+172d) | 2021-04-16 → 2021-10-06 (+173d) | 2d → 2.12d |  |  |  |
| 44 | Preparation for DM | 2021-04-15 → 2021-10-04 (+172d) | 2021-04-15 → 2021-10-06 (+174d) | 1d → 1.41d |  |  |  |
| 45 | Review Meeting | 2021-04-16 → 2021-10-06 (+173d) | 2021-04-16 → 2021-10-06 (+173d) | 1d → 0.71d |  |  |  |
| 46 | Rework | 2021-04-19 → 2021-10-06 (+170d) | 2021-04-19 → 2021-10-11 (+175d) | 1d → 2.43d |  |  |  |
| 47 | **Coding** | 2021-04-20 → 2021-10-11 (+174d) | 2021-04-28 → 2022-06-06 (+404d) | 7d → 170.73d |  |  |  |
| 48 | Write code | 2021-04-20 → 2021-10-11 (+174d) | 2021-04-20 → 2022-02-25 (+311d) | 1d → 99.68d |  |  |  |
| 49 | **Unit testing** | 2021-04-21 → 2022-02-25 (+310d) | 2021-04-23 → 2022-05-20 (+392d) | 3d → 59.12d |  |  |  |
| 50 | Prepare/Execute test cases | 2021-04-21 → 2022-02-25 (+310d) | 2021-04-21 → 2022-04-04 (+348d) | 1d → 25.69d |  |  |  |
| 51 | Fix found defects | 2021-04-22 → 2022-04-04 (+347d) | 2021-04-22 → 2022-05-04 (+377d) | 1d → 21.43d |  |  |  |
| 52 | Test fixed defects | 2021-04-23 → 2022-05-04 (+376d) | 2021-04-23 → 2022-05-20 (+392d) | 1d → 12d |  |  |  |
| 53 | **Code inspection** | 2021-04-26 → 2022-05-20 (+389d) | 2021-04-28 → 2022-06-06 (+404d) | 3d → 11.93d |  |  |  |
| 54 | Preparation for code inspection | 2021-04-26 → 2022-05-20 (+389d) | 2021-04-26 → 2022-05-25 (+394d) | 1d → 3.33d |  |  |  |
| 55 | code inspection meeting | 2021-04-27 → 2022-05-25 (+393d) | 2021-04-27 → 2022-05-27 (+395d) | 1d → 2.5d |  |  |  |
| 56 | Rework | 2021-04-28 → 2022-05-27 (+394d) | 2021-04-28 → 2022-06-06 (+404d) | 1d → 6.1d |  |  |  |
| 57 | **Testing** | 2021-04-29 → 2022-06-06 (+403d) | 2021-05-07 → 2022-08-23 (+473d) | 7d → 55.08d |  |  |  |
| 58 | Write test plan | 2021-04-29 → 2022-06-06 (+403d) | 2021-04-29 → 2022-06-30 (+427d) | 1d → 17.3d |  |  |  |
| 59 | **Review TP** | 2021-04-30 → 2022-06-30 (+426d) | 2021-05-04 → 2022-07-14 (+436d) | 3d → 10.03d |  |  |  |
| 60 | Preparation for TP | 2021-04-30 → 2022-06-30 (+426d) | 2021-04-30 → 2022-07-07 (+433d) | 1d → 5.41d |  |  |  |
| 61 | Review TP meeting | 2021-05-03 → 2022-07-07 (+430d) | 2021-05-03 → 2022-07-11 (+434d) | 1d → 2.17d |  |  |  |
| 62 | Rework | 2021-05-04 → 2022-07-11 (+433d) | 2021-05-04 → 2022-07-14 (+436d) | 1d → 2.45d |  |  |  |
| 63 | Execute TP (test cases) | 2021-05-05 → 2022-07-14 (+435d) | 2021-05-05 → 2022-08-05 (+457d) | 1d → 15.75d |  |  |  |
| 64 | Fix found defects | 2021-05-06 → 2022-08-05 (+456d) | 2021-05-06 → 2022-08-16 (+467d) | 1d → 7.2d |  |  |  |
| 65 | Test fixed defects | 2021-05-07 → 2022-08-16 (+466d) | 2021-05-07 → 2022-08-23 (+473d) | 1d → 4.8d |  |  |  |
| 66 | **Documentation** | 2021-05-10 → 2022-08-23 (+470d) | 2021-05-13 → 2022-09-07 (+482d) | 4d → 11.52d |  |  |  |
| 67 | User documentation | 2021-05-10 → 2022-08-23 (+470d) | 2021-05-10 → 2022-08-30 (+477d) | 1d → 5d |  |  |  |
| 68 | **Review UD** | 2021-05-11 → 2022-08-30 (+476d) | 2021-05-13 → 2022-09-07 (+482d) | 3d → 6.52d |  |  |  |
| 69 | Preparation for UD Review | 2021-05-11 → 2022-08-30 (+476d) | 2021-05-11 → 2022-09-01 (+478d) | 1d → 2.86d |  |  |  |
| 70 | Review UD Meeting | 2021-05-12 → 2022-09-01 (+477d) | 2021-05-12 → 2022-09-06 (+482d) | 1d → 2.23d |  |  |  |
| 71 | Rework | 2021-05-13 → 2022-09-06 (+481d) | 2021-05-13 → 2022-09-07 (+482d) | 1d → 1.43d |  |  |  |

## Version 3 (saved 2021-03-21)

Note of the change: Resource allocation up to coding

Last finish 2022-09-07 → 2022-05-12 (-118d).

Changed:

| ID | Task | Start | Finish | Duration | Total float | Other |
| --- | --- | --- | --- | --- | --- | --- |
| 1 | **Project Assignment 3** |  | 2022-09-07 → 2022-05-12 (-118d) | 382.59d → 298.73d |  |  |
| 3 | Write Plan |  |  |  |  | resources none → Project Manager2 |
| 5 | Preparation for review |  |  |  |  | resources none → Document Engineer379; Programmer379; Requirement engineer15; System engineer379; Test Engineer379 |
| 6 | Review meeting |  |  |  |  | resources none → Document Engineer379; Programmer379; Project Manager2; Requirement engineer15; System engineer379; Test Engineer379 |
| 7 | Rework |  |  |  |  | resources none → Project Manager2 |
| 8 | **Documented Software Development Process Updates** |  | 2021-04-22 → 2021-04-16 (-6d) | 10.53d → 6.53d |  |  |
| 9 | Process changes |  | 2021-04-15 → 2021-04-09 (-6d) | 6d → 2d |  | resources none → Test Engineer379; Requirement engineer15; System engineer379 |
| 10 | **Review changes** | 2021-04-15 → 2021-04-09 (-6d) | 2021-04-21 → 2021-04-15 (-6d) |  |  |  |
| 11 | Preparation for review | 2021-04-15 → 2021-04-09 (-6d) | 2021-04-20 → 2021-04-14 (-6d) |  |  | resources none → Document Engineer380; Programmer379; Requirement engineer14; System engineer380; Test Engineer380 |
| 12 | Review Meeting | 2021-04-20 → 2021-04-14 (-6d) | 2021-04-21 → 2021-04-15 (-6d) |  |  | resources none → Document Engineer380; Programmer379; Requirement engineer14; System engineer380; Test Engineer380; Requirement engineer15 |
| 13 | Rework | 2021-04-21 → 2021-04-15 (-6d) | 2021-04-22 → 2021-04-16 (-6d) |  |  | resources none → Requirement engineer15 |
| 14 | **Requirement** | 2021-04-22 → 2021-04-16 (-6d) | 2021-08-17 → 2021-05-13 (-96d) | 83.54d → 18.98d |  |  |
| 15 | Write requirements | 2021-04-22 → 2021-04-16 (-6d) | 2021-04-29 → 2021-04-20 (-9d) | 5.57d → 1.86d |  | resources none → Requirement engineer13; Requirement engineer14; Requirement engineer15 |
| 16 | Write Use case Model | 2021-04-29 → 2021-04-20 (-9d) | 2021-08-02 → 2021-04-30 (-94d) | 67d → 8.38d |  | resources none → Requirement engineer13; Requirement engineer9; Requirement engineer10; Requirement engineer14; Requirement engineer15; Requirement engineer28; Requirement engineer29; Requirement engineer32 |
| 17 | **Review requirements** | 2021-08-02 → 2021-04-30 (-94d) | 2021-08-12 → 2021-05-12 (-92d) |  |  |  |
| 18 | Preparation for review | 2021-08-02 → 2021-04-30 (-94d) | 2021-08-09 → 2021-05-07 (-94d) |  |  | resources none → Document Engineer379; Programmer379; System engineer379; Test Engineer379 |
| 19 | Review Meeting | 2021-08-09 → 2021-05-07 (-94d) | 2021-08-12 → 2021-05-12 (-92d) |  |  | resources none → Document Engineer379; Programmer379; Requirement engineer13; System engineer379; Test Engineer379 |
| 20 | Rework | 2021-08-12 → 2021-05-12 (-92d) | 2021-08-17 → 2021-05-13 (-96d) | 3.33d → 1.11d |  | resources none → Requirement engineer13; Requirement engineer14; Requirement engineer15 |
| 21 | **Build the development and testing lab environment** |  | 2021-05-17 → 2021-04-21 (-26d) | 27.9d → 9.95d | 76.41d → 23.23d |  |
| 22 | **Hardware Environemnt** |  | 2021-05-03 → 2021-04-15 (-18d) | 17.4d → 5.7d | 76.41d → 23.23d |  |
| 23 | Servers |  | 2021-04-23 → 2021-04-12 (-11d) | 12d → 3d | 421.47d → 25.8d | resources none → System engineer381; System engineer382; System engineer32; System engineer35 |
| 24 | Clients | 2021-04-23 → 2021-04-12 (-11d) | 2021-05-03 → 2021-04-15 (-18d) | 5.4d → 2.7d | 421.47d → 25.8d | resources none → System engineer32; System engineer35 |
| 25 | **Software Development Tools** | 2021-05-03 → 2021-04-15 (-18d) | 2021-05-04 → 2021-04-16 (-18d) |  | 76.41d → 23.23d |  |
| 26 | Build/compile tools | 2021-05-03 → 2021-04-15 (-18d) | 2021-05-04 → 2021-04-16 (-18d) |  | 421.47d → 25.8d | resources none → System engineer32 |
| 27 | **Software Testing Tools** | 2021-05-04 → 2021-04-16 (-18d) | 2021-05-17 → 2021-04-21 (-26d) | 9.5d → 3.25d | 76.41d → 23.23d |  |
| 28 | Test cases execution tools | 2021-05-04 → 2021-04-16 (-18d) | 2021-05-07 → 2021-04-20 (-17d) | 3.5d → 1.75d | 421.47d → 25.8d | resources none → System engineer32; System engineer35 |
| 29 | simulation tools | 2021-05-07 → 2021-04-20 (-17d) | 2021-05-17 → 2021-04-21 (-26d) | 6d → 1.5d | 421.47d → 25.8d | resources none → System engineer381; System engineer32; System engineer35; System engineer382 |
| 30 | **Analysis** | 2021-08-17 → 2021-05-13 (-96d) | 2021-09-01 → 2021-05-24 (-100d) | 10.24d → 7.67d |  |  |
| 31 | Write Analysis Document | 2021-08-17 → 2021-05-13 (-96d) | 2021-08-23 → 2021-05-14 (-101d) | 3.4d → 1.7d |  | resources none → System engineer379; System engineer380 |
| 32 | **Review Analysis Document** | 2021-08-23 → 2021-05-14 (-101d) | 2021-08-30 → 2021-05-24 (-98d) |  |  |  |
| 33 | Preparation for Analysis Document | 2021-08-23 → 2021-05-14 (-101d) | 2021-08-26 → 2021-05-20 (-98d) |  |  | resources none → Document Engineer379; Programmer379; Requirement engineer15; Test Engineer379 |
| 34 | Review Meeting | 2021-08-26 → 2021-05-20 (-98d) | 2021-08-30 → 2021-05-24 (-98d) |  |  | resources none → Document Engineer379; Programmer379; Requirement engineer15; System engineer379; Test Engineer379 |
| 35 | Rework | 2021-08-30 → 2021-05-24 (-98d) | 2021-09-01 → 2021-05-24 (-100d) | 1.74d → 0.87d |  | resources none → System engineer379; System engineer380 |
| 36 | **Design** | 2021-09-01 → 2021-05-24 (-100d) | 2021-10-11 → 2021-06-15 (-118d) | 28.18d → 15.45d |  |  |
| 37 | Write DD | 2021-09-01 → 2021-05-24 (-100d) | 2021-09-09 → 2021-05-27 (-105d) | 6.8d → 2.27d |  | resources none → System engineer31; System engineer16; System engineer30 |
| 38 | **Review DD** | 2021-09-09 → 2021-05-27 (-105d) | 2021-09-20 → 2021-06-04 (-108d) |  |  |  |
| 39 | Preparation for DD | 2021-09-09 → 2021-05-27 (-105d) | 2021-09-15 → 2021-06-02 (-105d) |  |  | resources none → Document Engineer379; Programmer379; Requirement engineer15; Test Engineer379 |
| 40 | Review Meeting | 2021-09-15 → 2021-06-02 (-105d) | 2021-09-20 → 2021-06-04 (-108d) |  |  | resources none → Document Engineer379; Programmer379; Requirement engineer15; System engineer31; Test Engineer379 |
| 41 | Rework | 2021-09-20 → 2021-06-04 (-108d) | 2021-09-27 → 2021-06-08 (-111d) | 4.85d → 1.62d |  | resources none → System engineer30; System engineer16; System engineer31 |
| 42 | Write Data model | 2021-09-27 → 2021-06-08 (-111d) | 2021-10-04 → 2021-06-10 (-116d) | 5.63d → 1.88d |  | resources none → System engineer16; System engineer30; System engineer31 |
| 43 | **Review DM** | 2021-10-04 → 2021-06-10 (-116d) | 2021-10-06 → 2021-06-14 (-114d) |  |  |  |
| 44 | Preparation for DM | 2021-10-04 → 2021-06-10 (-116d) | 2021-10-06 → 2021-06-11 (-117d) |  |  | resources none → Document Engineer379; Programmer379; Requirement engineer15; Test Engineer379 |
| 45 | Review Meeting | 2021-10-06 → 2021-06-11 (-117d) | 2021-10-06 → 2021-06-14 (-114d) |  |  | resources none → Document Engineer379; Programmer379; Requirement engineer15; System engineer31; Test Engineer379 |
| 46 | Rework | 2021-10-06 → 2021-06-14 (-114d) | 2021-10-11 → 2021-06-15 (-118d) | 2.43d → 1.22d |  | resources none → System engineer30; System engineer31 |
| 47 | **Coding** | 2021-10-11 → 2021-06-15 (-118d) | 2022-06-06 → 2022-02-09 (-117d) |  |  |  |
| 48 | Write code | 2021-10-11 → 2021-06-15 (-118d) | 2022-02-25 → 2021-11-02 (-115d) |  |  |  |
| 49 | **Unit testing** | 2022-02-25 → 2021-11-02 (-115d) | 2022-05-20 → 2022-01-24 (-116d) |  |  |  |
| 50 | Prepare/Execute test cases | 2022-02-25 → 2021-11-02 (-115d) | 2022-04-04 → 2021-12-07 (-118d) |  |  |  |
| 51 | Fix found defects | 2022-04-04 → 2021-12-07 (-118d) | 2022-05-04 → 2022-01-06 (-118d) |  |  |  |
| 52 | Test fixed defects | 2022-05-04 → 2022-01-06 (-118d) | 2022-05-20 → 2022-01-24 (-116d) |  |  |  |
| 53 | **Code inspection** | 2022-05-20 → 2022-01-24 (-116d) | 2022-06-06 → 2022-02-09 (-117d) |  |  |  |
| 54 | Preparation for code inspection | 2022-05-20 → 2022-01-24 (-116d) | 2022-05-25 → 2022-01-27 (-118d) |  |  |  |
| 55 | code inspection meeting | 2022-05-25 → 2022-01-27 (-118d) | 2022-05-27 → 2022-02-01 (-115d) |  |  |  |
| 56 | Rework | 2022-05-27 → 2022-02-01 (-115d) | 2022-06-06 → 2022-02-09 (-117d) |  |  |  |
| 57 | **Testing** | 2022-06-06 → 2022-02-09 (-117d) | 2022-08-23 → 2022-04-27 (-118d) |  |  |  |
| 58 | Write test plan | 2022-06-06 → 2022-02-09 (-117d) | 2022-06-30 → 2022-03-04 (-118d) |  |  |  |
| 59 | **Review TP** | 2022-06-30 → 2022-03-04 (-118d) | 2022-07-14 → 2022-03-18 (-118d) |  |  |  |
| 60 | Preparation for TP | 2022-06-30 → 2022-03-04 (-118d) | 2022-07-07 → 2022-03-11 (-118d) |  |  |  |
| 61 | Review TP meeting | 2022-07-07 → 2022-03-11 (-118d) | 2022-07-11 → 2022-03-16 (-117d) |  |  |  |
| 62 | Rework | 2022-07-11 → 2022-03-16 (-117d) | 2022-07-14 → 2022-03-18 (-118d) |  |  |  |
| 63 | Execute TP (test cases) | 2022-07-14 → 2022-03-18 (-118d) | 2022-08-05 → 2022-04-11 (-116d) |  |  |  |
| 64 | Fix found defects | 2022-08-05 → 2022-04-11 (-116d) | 2022-08-16 → 2022-04-20 (-118d) |  |  |  |
| 65 | Test fixed defects | 2022-08-16 → 2022-04-20 (-118d) | 2022-08-23 → 2022-04-27 (-118d) |  |  |  |
| 66 | **Documentation** | 2022-08-23 → 2022-04-27 (-118d) | 2022-09-07 → 2022-05-12 (-118d) |  |  |  |
| 67 | User documentation | 2022-08-23 → 2022-04-27 (-118d) | 2022-08-30 → 2022-05-04 (-118d) |  |  |  |
| 68 | **Review UD** | 2022-08-30 → 2022-05-04 (-118d) | 2022-09-07 → 2022-05-12 (-118d) |  |  |  |
| 69 | Preparation for UD Review | 2022-08-30 → 2022-05-04 (-118d) | 2022-09-01 → 2022-05-09 (-115d) |  |  |  |
| 70 | Review UD Meeting | 2022-09-01 → 2022-05-09 (-115d) | 2022-09-06 → 2022-05-11 (-118d) |  |  |  |
| 71 | Rework | 2022-09-06 → 2022-05-11 (-118d) | 2022-09-07 → 2022-05-12 (-118d) |  |  |  |

## Version 4 (saved 2021-03-21)

Note of the change: All resources are allocated

Last finish 2022-05-12 → 2021-09-20 (-234d).

Changed:

| ID | Task | Start | Finish | Duration | Other |
| --- | --- | --- | --- | --- | --- |
| 1 | **Project Assignment 3** |  | 2022-05-12 → 2021-09-20 (-234d) | 298.73d → 130.38d |  |
| 47 | **Coding** |  | 2022-02-09 → 2021-08-19 (-174d) | 170.73d → 46.65d |  |
| 48 | Write code |  | 2021-11-02 → 2021-06-30 (-125d) | 99.68d → 11.08d | resources none → Programmer379; Programmer7; Programmer8; Programmer12; Programmer13; Programmer22; Programmer23; Programmer380; Programmer381 |
| 49 | **Unit testing** | 2021-11-02 → 2021-06-30 (-125d) | 2022-01-24 → 2021-08-09 (-168d) | 59.12d → 27.71d |  |
| 50 | Prepare/Execute test cases | 2021-11-02 → 2021-06-30 (-125d) | 2021-12-07 → 2021-07-06 (-154d) | 25.69d → 4.28d | resources none → Programmer379; Programmer7; Programmer8; Programmer12; Programmer380; Programmer381 |
| 51 | Fix found defects | 2021-12-07 → 2021-07-06 (-154d) | 2022-01-06 → 2021-08-05 (-154d) |  | resources none → Programmer379; Programmer7; Programmer8; Programmer12; Programmer380; Programmer381 |
| 52 | Test fixed defects | 2022-01-06 → 2021-08-05 (-154d) | 2022-01-24 → 2021-08-09 (-168d) | 12d → 2d | resources none → Programmer379; Programmer7; Programmer8; Programmer12; Programmer380; Programmer381 |
| 53 | **Code inspection** | 2022-01-24 → 2021-08-09 (-168d) | 2022-02-09 → 2021-08-19 (-174d) | 11.93d → 7.86d |  |
| 54 | Preparation for code inspection | 2022-01-24 → 2021-08-09 (-168d) | 2022-01-27 → 2021-08-12 (-168d) |  | resources none → Document Engineer379; Requirement engineer15; System engineer379; Test Engineer379 |
| 55 | code inspection meeting | 2022-01-27 → 2021-08-12 (-168d) | 2022-02-01 → 2021-08-17 (-168d) |  | resources none → Document Engineer379; Programmer379; Requirement engineer15; System engineer379; Test Engineer379 |
| 56 | Rework | 2022-02-01 → 2021-08-17 (-168d) | 2022-02-09 → 2021-08-19 (-174d) | 6.1d → 2.03d | resources none → Programmer379; Programmer380; Programmer381 |
| 57 | **Testing** | 2022-02-09 → 2021-08-19 (-174d) | 2022-04-27 → 2021-09-09 (-230d) | 55.08d → 15.28d |  |
| 58 | Write test plan | 2022-02-09 → 2021-08-19 (-174d) | 2022-03-04 → 2021-08-23 (-193d) | 17.3d → 2.47d | resources none → Test Engineer379; Test Engineer380; Test Engineer381; Test Engineer382; Test Engineer384; Test Engineer385; Test Engineer386 |
| 59 | **Review TP** | 2022-03-04 → 2021-08-23 (-193d) | 2022-03-18 → 2021-09-02 (-197d) | 10.03d → 8.4d |  |
| 60 | Preparation for TP | 2022-03-04 → 2021-08-23 (-193d) | 2022-03-11 → 2021-08-30 (-193d) |  | resources none → Document Engineer379; Programmer379; Requirement engineer15; System engineer379 |
| 61 | Review TP meeting | 2022-03-11 → 2021-08-30 (-193d) | 2022-03-16 → 2021-09-02 (-195d) |  | resources none → Document Engineer379; Programmer379; Requirement engineer15; System engineer379; Test Engineer379 |
| 62 | Rework | 2022-03-16 → 2021-09-02 (-195d) | 2022-03-18 → 2021-09-02 (-197d) | 2.45d → 0.82d | resources none → Test Engineer379; Test Engineer380; Test Engineer381 |
| 63 | Execute TP (test cases) | 2022-03-18 → 2021-09-02 (-197d) | 2022-04-11 → 2021-09-07 (-216d) | 15.75d → 2.25d | resources none → Test Engineer379; Test Engineer380; Test Engineer381; Test Engineer382; Test Engineer384; Test Engineer385; Test Engineer386 |
| 64 | Fix found defects | 2022-04-11 → 2021-09-07 (-216d) | 2022-04-20 → 2021-09-08 (-224d) | 7.2d → 1.2d | resources none → Programmer379; Programmer7; Programmer8; Programmer12; Programmer380; Programmer381 |
| 65 | Test fixed defects | 2022-04-20 → 2021-09-08 (-224d) | 2022-04-27 → 2021-09-09 (-230d) | 4.8d → 0.96d | resources none → Test Engineer379; Test Engineer380; Test Engineer381; Test Engineer382; Test Engineer384 |
| 66 | **Documentation** | 2022-04-27 → 2021-09-09 (-230d) | 2022-05-12 → 2021-09-20 (-234d) | 11.52d → 7.05d |  |
| 67 | User documentation | 2022-04-27 → 2021-09-09 (-230d) | 2022-05-04 → 2021-09-10 (-236d) | 5d → 1.25d | resources none → Document Engineer379; Document Engineer380; Document Engineer381; Document Engineer382 |
| 68 | **Review UD** | 2022-05-04 → 2021-09-10 (-236d) | 2022-05-12 → 2021-09-20 (-234d) | 6.52d → 5.8d |  |
| 69 | Preparation for UD Review | 2022-05-04 → 2021-09-10 (-236d) | 2022-05-09 → 2021-09-15 (-236d) |  | resources none → Programmer379; Requirement engineer15; System engineer379; Test Engineer379 |
| 70 | Review UD Meeting | 2022-05-09 → 2021-09-15 (-236d) | 2022-05-11 → 2021-09-17 (-236d) |  | resources none → Document Engineer379; Programmer379; Requirement engineer15; System engineer379; Test Engineer379 |
| 71 | Rework | 2022-05-11 → 2021-09-17 (-236d) | 2022-05-12 → 2021-09-20 (-234d) | 1.43d → 0.71d | resources none → Document Engineer379; Document Engineer380 |

## Version 5 (saved 2021-03-21)

Note of the change: Add analysis file and also project file of assignment 1 and 2.

Last finish 2021-09-20 → 2021-08-25 (-26d).

Changed:

| ID | Task | Start | Finish | Duration |
| --- | --- | --- | --- | --- |
| 1 | **Project Assignment 3** |  | 2021-09-20 → 2021-08-25 (-26d) | 130.38d → 112.52d |
| 47 | **Coding** |  | 2021-08-19 → 2021-07-26 (-24d) | 46.65d → 28.79d |
| 49 | **Unit testing** |  | 2021-08-09 → 2021-07-14 (-26d) | 27.71d → 9.85d |
| 51 | Fix found defects |  | 2021-08-05 → 2021-07-12 (-24d) | 21.43d → 3.57d |
| 52 | Test fixed defects | 2021-08-05 → 2021-07-12 (-24d) | 2021-08-09 → 2021-07-14 (-26d) |  |
| 53 | **Code inspection** | 2021-08-09 → 2021-07-14 (-26d) | 2021-08-19 → 2021-07-26 (-24d) |  |
| 54 | Preparation for code inspection | 2021-08-09 → 2021-07-14 (-26d) | 2021-08-12 → 2021-07-19 (-24d) |  |
| 55 | code inspection meeting | 2021-08-12 → 2021-07-19 (-24d) | 2021-08-17 → 2021-07-22 (-26d) |  |
| 56 | Rework | 2021-08-17 → 2021-07-22 (-26d) | 2021-08-19 → 2021-07-26 (-24d) |  |
| 57 | **Testing** | 2021-08-19 → 2021-07-26 (-24d) | 2021-09-09 → 2021-08-16 (-24d) |  |
| 58 | Write test plan | 2021-08-19 → 2021-07-26 (-24d) | 2021-08-23 → 2021-07-28 (-26d) |  |
| 59 | **Review TP** | 2021-08-23 → 2021-07-28 (-26d) | 2021-09-02 → 2021-08-10 (-23d) |  |
| 60 | Preparation for TP | 2021-08-23 → 2021-07-28 (-26d) | 2021-08-30 → 2021-08-05 (-25d) |  |
| 61 | Review TP meeting | 2021-08-30 → 2021-08-05 (-25d) | 2021-09-02 → 2021-08-09 (-24d) |  |
| 62 | Rework | 2021-09-02 → 2021-08-09 (-24d) | 2021-09-02 → 2021-08-10 (-23d) |  |
| 63 | Execute TP (test cases) | 2021-09-02 → 2021-08-10 (-23d) | 2021-09-07 → 2021-08-12 (-26d) |  |
| 64 | Fix found defects | 2021-09-07 → 2021-08-12 (-26d) | 2021-09-08 → 2021-08-13 (-26d) |  |
| 65 | Test fixed defects | 2021-09-08 → 2021-08-13 (-26d) | 2021-09-09 → 2021-08-16 (-24d) |  |
| 66 | **Documentation** | 2021-09-09 → 2021-08-16 (-24d) | 2021-09-20 → 2021-08-25 (-26d) |  |
| 67 | User documentation | 2021-09-09 → 2021-08-16 (-24d) | 2021-09-10 → 2021-08-17 (-24d) |  |
| 68 | **Review UD** | 2021-09-10 → 2021-08-17 (-24d) | 2021-09-20 → 2021-08-25 (-26d) |  |
| 69 | Preparation for UD Review | 2021-09-10 → 2021-08-17 (-24d) | 2021-09-15 → 2021-08-20 (-26d) |  |
| 70 | Review UD Meeting | 2021-09-15 → 2021-08-20 (-26d) | 2021-09-17 → 2021-08-24 (-24d) |  |
| 71 | Rework | 2021-09-17 → 2021-08-24 (-24d) | 2021-09-20 → 2021-08-25 (-26d) |  |
